任务编号,阶段,任务名称,负责角色,负责人,协作角色,前置依赖,计划开始,计划结束,工期(工作日),交付物,验收标准,状态,备注
T01,P1 启动与需求确认,项目启动会，确认各角色具体人员,项目经理,待确认,市场部负责人、IT部负责人,无,2026-12-07,2026-12-07,1,启动会纪要、项目人员名单,各角色均已落实到具体人员并经市场部负责人确认,未开始,
T02,P1 启动与需求确认,核查合同：预算金额、设计修改次数上限、设计交付范围,项目经理,待确认,市场部负责人,无,2026-12-07,2026-12-08,2,合同要点摘要,预算金额与修改次数上限均有明确记录,未开始,
T03,P1 启动与需求确认,旧站内容盘点（公司介绍、新闻、案例、下载中心）,内容运营,待确认,项目经理,无,2026-12-07,2026-12-09,3,旧站内容清单,新闻约80篇、案例约20个已核对；下载中心资料数量与格式已记录,未开始,
T04,P1 启动与需求确认,导出旧站产品页URL清单,后端开发,待确认,内容运营,无,2026-12-07,2026-12-09,3,旧链接清单,覆盖旧站全部产品页URL,未开始,
T05,P1 启动与需求确认,核查服务器、域名、备案现状，评估是否新增CDN,IT部负责人,待确认,后端开发,无,2026-12-07,2026-12-11,5,环境评估结论,结论明确；如需新增CDN已说明预算与排期影响,未开始,
T06,P1 启动与需求确认,确定网站栏目结构与页面清单,项目经理,待确认,市场部负责人、内容运营、产品线经理,T03,2026-12-09,2026-12-10,2,站点地图、页面清单,经市场部负责人确认；明确哪些页面纳入新设计,未开始,新闻、案例、下载中心、公司介绍页是否纳入新设计待确认
T07,P1 启动与需求确认,确认技术方案（内容管理方式、表单通知、统计工具、跳转方案）,后端开发,待确认,前端开发、IT部负责人,T04、T06,2026-12-10,2026-12-11,2,技术方案说明,经IT部负责人确认,未开始,统计工具待确认
T08,P1 启动与需求确认,向外部设计公司提交设计需求,项目经理,待确认,UI设计师、市场部负责人,T02、T06,2026-12-10,2026-12-11,2,设计需求说明,包含VI规范、页面清单、双端适配要求；设计公司确认接收,未开始,
T09,P1 启动与需求确认,上线日期报管理层确认,项目经理,待确认,市场部负责人、管理层,T01,2026-12-11,2026-12-31,15,上线日期确认记录,获得管理层书面确认,未开始,建议第4周结束前确认；工期含元旦，元旦是否放假待确认
M1,P1 启动与需求确认,里程碑：需求与范围确认,项目经理,待确认,市场部负责人,T01至T08,2026-12-11,2026-12-11,0,—,T01至T08完成,未开始,
T10,P2 设计与内容,首页、产品页视觉设计初稿（电脑端与手机端）,UI设计师,待确认（外部设计公司）,项目经理,T08,2026-12-14,2026-12-18,5,设计初稿,覆盖页面清单中纳入设计的全部页面及双端版本；符合现有VI规范,未开始,
T11,P2 设计与内容,设计评审与修改定稿,市场部负责人,待确认,UI设计师、项目经理、产品线经理,T10,2026-12-21,2026-12-23,3,设计定稿稿件,市场部负责人确认；修改轮次不超过合同上限,未开始,修改次数上限待查合同
T12,P2 设计与内容,首页、公司介绍文案重写,内容运营,待确认,市场部负责人,T06,2026-12-14,2026-12-18,5,首页及公司介绍文案,覆盖页面清单中的全部文案位置,未开始,
T13,P2 设计与内容,提供3条产品线技术参数与卖点,产品线经理,待确认（3名）,内容运营,T06,2026-12-14,2026-12-18,5,产品资料（约12个产品）,每个产品的参数与卖点齐全,未开始,产品线与负责人的对应关系待确认
T14,P2 设计与内容,产品页文案编写,内容运营,待确认,产品线经理,T13,2026-12-21,2026-12-23,3,产品页文案,约12个产品详情页文案齐全,未开始,
T15,P2 设计与内容,产品线经理确认产品页文案,产品线经理,待确认（3名）,内容运营,T14,2026-12-23,2026-12-24,2,产品页文案确认记录,3名产品线经理分别书面确认各自产品线内容,未开始,
T16,P2 设计与内容,设计与文案最终确认,市场部负责人,待确认,项目经理,T11、T12、T15,2026-12-24,2026-12-25,2,设计与文案定稿确认记录,市场部负责人书面确认,未开始,须在第5周展会前完成
M2,P2 设计与内容,里程碑：设计与文案定稿,市场部负责人,待确认,项目经理,T16,2026-12-25,2026-12-25,0,—,T16完成,未开始,
T17,P3 开发与迁移,前端公共框架与组件开发（响应式）,前端开发,待确认,UI设计师,T07、T10,2026-12-21,2026-12-25,5,前端公共框架,公共组件在电脑端和手机端显示正常,未开始,基于设计初稿先行开发，定稿后调整
T18,P3 开发与迁移,内容管理后台与数据结构,后端开发,待确认,前端开发,T07,2026-12-21,2026-12-25,5,内容管理功能,可录入、编辑、发布首页、产品、新闻、案例、下载资料,未开始,
T19,P3 开发与迁移,测试环境部署,IT部负责人,待确认,后端开发,T05、T18,2026-12-28,2026-12-31,4,测试环境,项目成员可访问测试环境,未开始,
T20,P3 开发与迁移,首页与产品页前端开发,前端开发,待确认,UI设计师,T16、T17,2026-12-28,2027-01-06,8,首页与产品页,与设计定稿一致；电脑端和手机端显示正常,未开始,工期含元旦，元旦是否放假待确认
T21,P3 开发与迁移,咨询表单开发及销售邮箱通知,后端开发,待确认,前端开发、项目经理,T18,2026-12-28,2026-12-31,4,咨询表单功能,提交成功后销售邮箱能收到通知,未开始,表单字段与销售邮箱地址待确认
T22,P3 开发与迁移,旧链接跳转规则配置,后端开发,待确认,IT部负责人,T04、T06、T18,2026-12-28,2026-12-31,4,跳转对照表及跳转配置,旧链接清单中的产品页URL均跳转到对应新页面,未开始,必做项
T23,P3 开发与迁移,网站数据统计配置,前端开发,待确认,项目经理,T07、T19,2027-01-04,2027-01-05,2,统计配置,统计后台能正常记录访问数据,未开始,统计工具与统计指标待确认
T24,P3 开发与迁移,公司介绍与下载中心资料迁移,内容运营,待确认,后端开发,T18、T19,2026-12-28,2026-12-31,4,已迁移的公司介绍与下载资料,与内容清单一致，下载文件可正常打开,未开始,下载中心资料数量待确认
T25,P3 开发与迁移,新闻、案例格式整理与迁移,内容运营,待确认,后端开发,T18、T19,2026-12-28,2027-01-06,8,已迁移的新闻与案例,数量与内容清单一致；原文未改动，格式统一,未开始,第5周展会期间投入减少，建议主要工作量在第4周完成；是否支持批量导入待确认
T26,P3 开发与迁移,首页、产品页正式内容录入,内容运营,待确认,产品线经理,T16、T20,2027-01-06,2027-01-07,2,已录入的首页与产品页内容,内容与定稿文案一致,未开始,处于展会周，人员投入待确认
M3,P3 开发与迁移,里程碑：开发与迁移完成,项目经理,待确认,前端开发、后端开发、内容运营,T17至T26,2027-01-07,2027-01-07,0,—,T17至T26完成,未开始,
T27,P4 测试与验收,功能测试（表单、跳转、统计、下载等）,测试,待确认（IT部兼任）,前端开发、后端开发,T21、T22、T23、T24,2027-01-06,2027-01-08,3,测试记录、缺陷清单,功能用例全部执行,未开始,
T28,P4 测试与验收,电脑端与手机端适配测试,测试,待确认（IT部兼任）,前端开发,T20,2027-01-06,2027-01-08,3,适配测试记录,确认范围内的浏览器与机型无显示错位,未开始,浏览器与机型范围待确认
T29,P4 测试与验收,缺陷修复与回归测试,前端开发、后端开发,待确认,测试,T27、T28,2027-01-07,2027-01-11,3,修复记录、回归测试记录,严重缺陷全部关闭,未开始,缺陷分级标准待确认
T30,P4 测试与验收,内容验收（含产品线经理确认产品页上线内容）,内容运营,待确认,产品线经理、项目经理,T25、T26,2027-01-08,2027-01-11,2,内容验收记录,全站内容与定稿及内容清单一致,未开始,
T31,P4 测试与验收,功能验收,项目经理,待确认,测试、IT部负责人,T29,2027-01-11,2027-01-12,2,功能验收记录,项目目标中的功能项全部通过,未开始,
T32,P4 测试与验收,最终验收确认,市场部负责人,待确认,项目经理,T30、T31,2027-01-12,2027-01-12,1,最终验收确认记录,市场部负责人书面确认同意上线,未开始,
M4,P4 测试与验收,里程碑：验收通过,市场部负责人,待确认,项目经理,T32,2027-01-12,2027-01-12,0,—,T32完成,未开始,
T33,P5 上线与收尾,旧站完整备份；制定上线方案与回退方案,IT部负责人,待确认,后端开发,T19,2027-01-11,2027-01-12,2,备份记录、上线与回退方案,备份可恢复；回退方案经项目经理确认,未开始,
T34,P5 上线与收尾,生产环境部署与上线发布,IT部负责人,待确认,前端开发、后端开发,T09、T32、T33,待确认,待确认,1,上线发布记录,新官网可通过正式域名访问,未开始,上线日期待管理层确认；按排期建议不早于2027-01-13
T35,P5 上线与收尾,上线后验证（页面、表单通知、旧链接跳转、统计）,测试,待确认（IT部兼任）,项目经理、内容运营,T34,待确认,待确认,1,上线验证记录,正式环境下各项功能均正常,未开始,上线当日执行
T36,P5 上线与收尾,上线后问题跟踪与处理,项目经理,待确认,前端开发、后端开发、IT部负责人,T35,待确认,2027-01-15,待确认,问题跟踪清单,问题均有记录与处理结论,未开始,开始日期取决于上线日期
T37,P5 上线与收尾,项目总结与交接,项目经理,待确认,全体角色,T36,2027-01-15,2027-01-15,1,项目总结、后台使用与运维交接说明,内容维护与运维责任人已明确,未开始,交接对象待确认
M5,P5 上线与收尾,里程碑：正式上线,IT部负责人,待确认,项目经理,T34、T35,待确认,待确认,0,—,T34、T35完成,未开始,第6周内，具体日期待管理层确认
